# Schependomlaan Nijmegen

Schedule from MS Project XML, 2015-02-19 to 2015-12-17.

## Calendars

- Prognosekalender verlof / rv / vv: Mon-Fri 08:00-16:00; Sat-Sun off. Exceptions (off unless hours are given): 2015-02-25, 2015-04-06, 2015-04-27, 2015-05-04 to 2015-05-05, 2015-05-14 to 2015-05-15, 2015-05-25, 2015-07-27 to 2015-07-31, 2015-08-03 to 2015-08-07, 2015-08-10 to 2015-08-14, 2015-09-16, 2015-10-21, 2015-11-18, 2015-12-02, 2015-12-09, 2015-12-16.

## Schedule

| ID | WBS | Task | Duration | Start | Finish | Predecessors | Constraint |
| --- | --- | --- | --- | --- | --- | --- | --- |
| 1 | 1 | Onwerkbare dagen | 0d | 2015-02-19 | 2015-02-19 |  | start no earlier than 2015-02-19 |
| 2 | 2 | Cum werkbare dagen | 0d | 2015-02-19 | 2015-02-19 |  | start no earlier than 2015-02-19 |
| 4 | 3 | UITVOERING | 0d | 2015-02-19 | 2015-02-19 |  | start no earlier than 2015-02-19 |
| 5 | 5626 | NUTS aanslutingen | 1d | 2015-02-19 | 2015-02-19 |  | start no earlier than 2015-02-19 |
| 6 | 5631 | Plaatsen bouwketen | 2d | 2015-02-20 | 2015-02-23 |  | start no earlier than 2015-02-20 |
| 8 | 5628 | Maatvoering gemeente | 1d | 2015-02-20 | 2015-02-20 |  | start no earlier than 2015-02-20 |
| 9 | 5629 | Uitzetten grondwerk | 1d | 2015-02-26 | 2015-02-26 |  | start no earlier than 2015-02-26 |
| 10 | 5632 | Grondwerk | 5d | 2015-02-20 | 2015-02-27 |  | start no earlier than 2015-02-20 |
| 12 | 5635 | Stellen bruggetjes | 2d | 2015-02-26 | 2015-02-27 |  | start no earlier than 2015-02-26 |
| 13 | 5658 | Nuts invoeren | 3d | 2015-03-02 | 2015-03-04 |  | start no earlier than 2015-03-02 |
| 14 | 5637 | Werkvloer liftput | 1d | 2015-03-03 | 2015-03-03 |  | start no earlier than 2015-03-03 |
| 15 | 5638 | Wapening liftvloer | 1d | 2015-03-04 | 2015-03-04 |  | start no earlier than 2015-03-04 |
| 16 | 5639 | Bekisten liftvloer | 1d | 2015-03-04 | 2015-03-04 |  | start no earlier than 2015-03-04 |
| 17 | 5640 | Stort liftvloer | 1d | 2015-03-05 | 2015-03-05 |  | start no earlier than 2015-03-05 |
| 19 | 5641 | Bekisten liftwanden | 1d | 2015-03-06 | 2015-03-06 |  | start no earlier than 2015-03-06 |
| 20 | 5642 | Wapening liftwanden | 1d | 2015-03-09 | 2015-03-09 |  | start no earlier than 2015-03-09 |
| 21 | 5643 | Stort liftwanden | 1d | 2015-03-10 | 2015-03-10 |  | start no earlier than 2015-03-10 |
| 23 | 5633 | Maatvoering fundering | 1d | 2015-03-11 | 2015-03-11 |  | start no earlier than 2015-03-11 |
| 25 | 5644 | Aanvullen liftput | 1d | 2015-03-11 | 2015-03-11 |  | start no earlier than 2015-03-11 |
| 26 | 5634 | Stellen funderingkist incl. poeren | 7d | 2015-03-12 | 2015-03-20 |  | start no earlier than 2015-03-12 |
| 27 | 5636 | Wapening | 4d | 2015-03-19 | 2015-03-24 |  | start no earlier than 2015-03-19 |
| 29 | 5645 | Stort | 1d | 2015-03-25 | 2015-03-25 |  | start no earlier than 2015-03-25 |
| 31 | 5646 | Opstorten fundering | 6d | 2015-03-26 | 2015-04-02 |  | start no earlier than 2015-03-26 |
| 32 | 5647 | Wapening | 2d | 2015-04-01 | 2015-04-02 |  | start no earlier than 2015-04-01 |
| 33 | 5648 | Stort | 1d | 2015-04-03 | 2015-04-03 |  | start no earlier than 2015-04-03 |
| 35 | 6561 | Bodemafsluiting aanbrengen | 1d | 2015-04-07 | 2015-04-07 |  | start no earlier than 2015-04-07 |
| 36 | 5657 | Installaties onder peil | 3d | 2015-04-07 | 2015-04-09 |  | start no earlier than 2015-04-07 |
| 37 | 6562 | Stelwerk metselwerk onder peil | 1d | 2015-04-07 | 2015-04-07 |  | start no earlier than 2015-04-07 |
| 38 | 6563 | Metselwerk onderpeil (buitenblad) | 5d | 2015-04-08 | 2015-04-14 |  | start no earlier than 2015-04-08 |
| 40 | 5649 | Maatvoering begane grondvloer | 1d | 2015-04-10 | 2015-04-10 |  | start no earlier than 2015-04-10 |
| 41 | 5650 | Kanaalplaatvloer leggen (lev. week 16) | 1d | 2015-04-13 | 2015-04-13 |  | start no earlier than 2015-04-13 |
| 42 | 5651 | Bekisten | 2d | 2015-04-14 | 2015-04-15 |  | start no earlier than 2015-04-14 |
| 43 | 5652 | Afstorten kanaalplaat | 1d | 2015-04-16 | 2015-04-16 |  | start no earlier than 2015-04-16 |
| 45 | 5653 | Maatvoering | 1d | 2015-04-17 | 2015-04-17 |  | start no earlier than 2015-04-17 |
| 46 | 6489 | Maatvoering | 1d | 2015-05-20 | 2015-05-20 | 79, 45 |  |
| 47 | 6500 | Maatvoering | 1d | 2015-06-16 | 2015-06-16 | 46 | start no earlier than 2015-06-16 |
| 48 | 5654 | Plaatsen stalen kolommen | 1d | 2015-04-20 | 2015-04-20 |  | start no earlier than 2015-04-20 |
| 49 | 6490 | Prefab trappen en bordes | 1d | 2015-05-21 | 2015-05-21 |  | start no earlier than 2015-05-21 |
| 50 | 6501 | Prefab trappen en bordes | 1d | 2015-06-17 | 2015-06-17 | 49 | start no earlier than 2015-06-17 |
| 52 | 5655 | Stelwerk kalkzandsteen | 1d | 2015-04-21 | 2015-04-21 |  | start no earlier than 2015-04-21 |
| 53 | 6491 | Stelwerk kalkzandsteen | 1d | 2015-05-22 | 2015-05-22 | 52 | start no earlier than 2015-05-22 |
| 54 | 6502 | Stelwerk kalkzandsteen | 1d | 2015-06-18 | 2015-06-18 | 53 | start no earlier than 2015-06-18 |
| 55 | 5656 | Lijmwerk kalkzandsteen elementen | 3d | 2015-04-22 | 2015-04-24 |  | start no earlier than 2015-04-22 |
| 56 | 6492 | Lijmwerk kalkzandsteen elementen | 3d | 2015-05-26 | 2015-05-28 | 55 | start no earlier than 2015-05-26 |
| 57 | 6503 | Lijmwerk kalkzandsteen elementen | 3d | 2015-06-19 | 2015-06-23 | 56 | start no earlier than 2015-06-19 |
| 59 | 5660 | Opstellen | 3d | 2015-04-29 | 2015-05-01 |  | start no earlier than 2015-04-29 |
| 60 | 6493 | Opstellen | 3d | 2015-05-29 | 2015-06-02 | 59 | start no earlier than 2015-05-29 |
| 61 | 6504 | Opstellen | 3d | 2015-06-24 | 2015-06-26 | 60 | start no earlier than 2015-06-24 |
| 62 | 5661 | Leggen breedplaat incl. Veiligheid | 2d | 2015-05-01 | 2015-05-06 |  | start no earlier than 2015-05-01 |
| 63 | 6494 | Leggen breedplaat incl. Veiligheid | 2d | 2015-06-03 | 2015-06-04 | 62 | start no earlier than 2015-06-03 |
| 64 | 6505 | Leggen breedplaat incl. Veiligheid | 2d | 2015-06-29 | 2015-06-30 | 63 | start no earlier than 2015-06-29 |
| 66 | 5662 | Randkist | 2d | 2015-05-07 | 2015-05-08 |  | start no earlier than 2015-05-07 |
| 67 | 6495 | Randkist | 2d | 2015-06-05 | 2015-06-08 | 66 | start no earlier than 2015-06-05 |
| 68 | 6506 | Randkist | 2d | 2015-07-01 | 2015-07-02 | 67 | start no earlier than 2015-07-01 |
| 69 | 5663 | Stalen balken | 1d | 2015-05-11 | 2015-05-11 |  | start no earlier than 2015-05-11 |
| 70 | 6496 | Stalen balken | 1d | 2015-06-09 | 2015-06-09 | 69 | start no earlier than 2015-06-09 |
| 71 | 6507 | Stalen balken | 1d | 2015-07-03 | 2015-07-03 | 70 | start no earlier than 2015-07-03 |
| 72 | 5664 | Installateurs | 4d | 2015-05-07 | 2015-05-12 |  | start no earlier than 2015-05-07 |
| 73 | 6497 | Installateurs | 4d | 2015-06-05 | 2015-06-10 | 72 | start no earlier than 2015-06-05 |
| 74 | 6508 | Installateurs | 4d | 2015-07-01 | 2015-07-06 | 73 | start no earlier than 2015-07-01 |
| 75 | 5665 | Wapening | 2d | 2015-05-13 | 2015-05-18 |  | start no earlier than 2015-05-13 |
| 76 | 6498 | Wapening | 2d | 2015-06-11 | 2015-06-12 | 75 | start no earlier than 2015-06-11 |
| 77 | 6509 | Wapening | 2d | 2015-07-07 | 2015-07-08 | 76 | start no earlier than 2015-07-07 |
| 79 | 5666 | Stort | 1d | 2015-05-19 | 2015-05-19 |  | start no earlier than 2015-05-19 |
| 80 | 6499 | Stort | 1d | 2015-06-15 | 2015-06-15 | 79 | start no earlier than 2015-06-15 |
| 81 | 6510 | Stort | 1d | 2015-07-09 | 2015-07-09 | 80 | start no earlier than 2015-07-09 |
| 83 | 5689 | Maatvoering | 1d | 2015-07-10 | 2015-07-10 |  | start no earlier than 2015-07-10 |
| 85 | 5690 | Staalconstuctie dak | 4d | 2015-07-13 | 2015-07-16 |  | start no earlier than 2015-07-13 |
| 86 | 5700 | Stelwerk /lijmwerk lift | 2d | 2015-07-15 | 2015-07-16 |  | start no earlier than 2015-07-15 |
| 88 | 5699 | Prefab trappen en bordes 2e verd. | 1d | 2015-07-13 | 2015-07-13 |  | start no earlier than 2015-07-13 |

| ID | WBS | Task | Duration | Start | Finish | Predecessors | Constraint |
| --- | --- | --- | --- | --- | --- | --- | --- |
| 90 | 5696 | Opstellen | 3d | 2015-07-16 | 2015-07-20 |  | start no earlier than 2015-07-16 |
| 91 | 5695 | Leggen breedplaat incl. Veiligheid | 2d | 2015-07-20 | 2015-07-21 |  | start no earlier than 2015-07-20 |
| 93 | 5694 | Randkist | 2d | 2015-07-22 | 2015-07-23 |  | start no earlier than 2015-07-22 |
| 94 | 5693 | Installateurs | 4d | 2015-07-22 | 2015-08-17 |  | start no earlier than 2015-07-22 |
| 95 | 5692 | Wapening | 2d | 2015-08-18 | 2015-08-19 |  | start no earlier than 2015-08-18 |
| 97 | 5691 | Stort | 1d | 2015-08-20 | 2015-08-20 |  | start no earlier than 2015-08-20 |
| 99 | 77 | GEVEL | 0d | 2015-02-19 | 2015-02-19 |  | start no earlier than 2015-02-19 |
| 100 | 5701 | Stelwerk buitengevel | 5d | 2015-06-16 | 2015-06-22 | 80 |  |
| 101 | 5705 | Stelwerk buitengevel | 5d | 2015-07-02 | 2015-07-08 | 100 | start no earlier than 2015-07-02 |
| 102 | 5709 | Stelwerk buitengevel | 5d | 2015-07-16 | 2015-07-22 | 101 | start no earlier than 2015-07-16 |
| 103 | 5702 | Plaatsen kozijnen | 5d | 2015-06-18 | 2015-06-24 |  | start no earlier than 2015-06-18 |
| 104 | 5706 | Plaatsen kozijnen | 5d | 2015-07-06 | 2015-07-10 | 103 | start no earlier than 2015-07-06 |
| 105 | 5710 | Plaatsen kozijnen | 5d | 2015-07-20 | 2015-07-24 | 104 | start no earlier than 2015-07-20 |
| 106 | 5712 | Prefab betonband | 2d | 2015-08-17 | 2015-08-18 |  | start no earlier than 2015-08-17 |
| 108 | 5704 | Steiger | 2d | 2015-06-30 | 2015-07-01 |  | start no earlier than 2015-06-30 |
| 109 | 5708 | Steiger | 2d | 2015-07-14 | 2015-07-15 | 108 | start no earlier than 2015-07-14 |
| 110 | 6488 | Steiger | 2d | 2015-08-17 | 2015-08-18 | 109 | start no earlier than 2015-08-17 |
| 111 | 5703 | Metselwerk | 10d | 2015-06-25 | 2015-07-08 |  | start no earlier than 2015-06-25 |
| 112 | 5707 | Metselwerk | 9d | 2015-07-09 | 2015-07-21 | 111 | start no earlier than 2015-07-09 |
| 113 | 5711 | Metselwerk | 10d | 2015-07-22 | 2015-08-25 | 112 | start no earlier than 2015-07-22 |
| 115 | 91 | DAK | 0d | 2015-02-19 | 2015-02-19 |  | start no earlier than 2015-02-19 |
| 116 | 6475 | Maatvoering kap | 5d | 2015-07-10 | 2015-07-16 |  | start no earlier than 2015-07-10 |
| 117 | 5713 | Maatvoering kap | 5d | 2015-08-21 | 2015-08-27 | 97, 116 |  |
| 118 | 6476 | Plaatsen scharnierkap incl. goot en platte daken | 16d | 2015-07-16 | 2015-08-27 | 109 |  |
| 119 | 5714 | Plaatsen scharnierkap incl. goot en platte daken | 15d | 2015-08-28 | 2015-09-18 | 118 | start no earlier than 2015-08-28 |
| 121 | 6481 | Zinken bekleding dakkapelen | 5d | 2015-08-28 | 2015-09-03 |  | start no earlier than 2015-08-28 |
| 122 | 6482 | Zinken bekleding dakkapelen | 10d | 2015-09-21 | 2015-10-02 | 121 | start no earlier than 2015-09-21 |
| 123 | 6486 | Dakramen | 5d | 2015-08-28 | 2015-09-03 |  | start no earlier than 2015-08-28 |
| 124 | 6487 | Dakramen | 10d | 2015-09-21 | 2015-10-02 | 123 | start no earlier than 2015-09-21 |
| 126 | 6477 | Dakbedekking platte daken | 5d | 2015-08-28 | 2015-09-03 | 119SS |  |
| 127 | 6478 | Dakbedekking platte daken | 10d | 2015-09-21 | 2015-10-02 | 119, 126 |  |
| 128 | 6479 | Dakpannen | 10d | 2015-09-04 | 2015-09-18 |  | start no earlier than 2015-09-04 |
| 129 | 6480 | Dakpannen | 10d | 2015-09-29 | 2015-10-12 | 128 | start no earlier than 2015-09-29 |
| 130 | 6483 | Zink goot | 5d | 2015-09-15 | 2015-09-22 |  | start no earlier than 2015-09-15 |
| 131 | 6484 | Zink goot | 5d | 2015-10-09 | 2015-10-15 | 130 | start no earlier than 2015-10-09 |
| 133 | 6485 | Afwerking onderzijde goot | 5d | 2015-10-09 | 2015-10-15 |  | start no earlier than 2015-10-09 |
| 135 | 6511 | Zakken steiger | 20d | 2015-10-16 | 2015-11-13 |  | start no earlier than 2015-10-16 |
| 136 | 6532 | Hekwerken buiten en binnen | 2d | 2015-10-28 | 2015-10-29 |  | start no earlier than 2015-10-28 |
| 137 | 6533 | Hekwerken buiten en binnen | 9d | 2015-11-06 | 2015-11-19 | 136 | start no earlier than 2015-11-06 |
| 139 | 6516 | NUTS aansluitingen | 10d | 2015-11-16 | 2015-11-30 |  | start no earlier than 2015-11-16 |
| 140 | 6557 | Plaatsen lift | 15d | 2015-10-16 | 2015-11-06 | 131 |  |
| 142 | 6520 | Plaatsen bergingen | 10d | 2015-11-05 | 2015-11-19 |  | start no earlier than 2015-11-05 |
| 143 | 6517 | Buiteninrichting | 16d | 2015-11-16 | 2015-12-10 | 135 |  |
| 145 | 114 | AFBOUW | 0d | 2015-02-19 | 2015-02-19 |  | start no earlier than 2015-02-19 |
| 146 | 6512 | Start ruwe afbouw incl. algemene ruimtes | 15d | 2015-09-04 | 2015-09-25 |  | start no earlier than 2015-09-04 |
| 148 | 6513 | Einde ruwe afbouw incl. algemene ruimtes | 15d | 2015-10-05 | 2015-10-26 | 146SS |  |
| 150 | 6514 | Start fijne afbouw incl. algemene ruimtes | 15d | 2015-10-06 | 2015-10-27 | 148SS+1d |  |
| 152 | 6515 | Einde fijne afbouw incl. algemene ruimtes | 15d | 2015-11-10 | 2015-12-01 | 150SS |  |
| 154 | 119 | OPLEVEREN | 0d | 2015-02-19 | 2015-02-19 |  | start no earlier than 2015-02-19 |
| 155 | 6518 | Voorschouw | 2d | 2015-12-03 | 2015-12-04 |  | start no earlier than 2015-12-03 |
| 157 | 6519 | Opleveren | 4d | 2015-12-11 | 2015-12-17 |  | start no earlier than 2015-12-11 |
